# Planificación de proyecto Global 05-01-2026

Schedule from MS Project, 2025-09-24 to 2026-08-04, A marks actual dates.

## Calendars

- Standard: Mon-Fri 08:00-12:00, 13:00-17:00; Sat-Sun off.

## Resources

| Resource |
| --- |
| Sixmanager |
| BCI |
| Sixmanager, BCI |
| Sixmanager, BCI, Calypso |

## Schedule

| ID | WBS | Task | Type | Duration | Start | Finish | Complete | Remaining | Total slack | Constraint | Resources | Work | Actual work | Text2 | Text5 | Text3 | Text4 | Text1 |
| --- | --- | --- | --- | --- | --- | --- | --- | --- | --- | --- | --- | --- | --- | --- | --- | --- | --- | --- |
| 1 | 1 | **Hablitación Plataforma Calypso Global** |  | 185d | 2025-09-24 A | 2026-06-09 | 38% | 114.79d | 40d | start no earlier than 2025-09-24 |  | 2583.01h | 1050.4h | No se ha iniciado |  |  |  |  |
| 2 | 1.1 | **Ambiente Pre Productivo** |  | 44d | 2025-09-24 A | 2025-11-24 A | 100% |  |  |  |  | 972h | 972h |  | ID02 |  |  |  |
| 3 | 1.1.1 | **Kick off y requerimientos** |  | 1d | 2025-09-24 A | 2025-09-24 A | 100% |  |  |  |  | 8h | 8h |  | ID03 |  |  |  |
| 4 | 1.1.1.1 | Inicio formal del proyecto (Kick Off) |  | 1d | 2025-09-24 A | 2025-09-24 A | 100% |  |  |  | Sixmanager | 8h | 8h | Completo | ID04 |  |  |  |
| 5 | 1.1.2 | **Habilitacion de infrastructura fisica (Pre requisitos)** |  | 14d | 2025-10-03 A | 2025-10-22 A | 100% |  |  |  |  | 176h | 176h | Completo | ID05 |  |  |  |
| 6 | 1.1.2.1 | Direccionamiento IP / VLAN / PORT |  | 2d | 2025-10-03 A | 2025-10-06 A | 100% |  |  |  | BCI | 16h | 16h | Completo | ID06 | Ya se generó ticket al área de redes BCI | BCI - Equipo Redes |  |
| 7 | 1.1.2.2 | Gestión de accesos al datacenter (para ingreso de equipos) |  | 1d | 2025-10-03 A | 2025-10-03 A | 100% |  |  |  | BCI | 8h | 8h | Completo | ID07 |  | BCI - PM |  |
| 8 | 1.1.2.3 | Espacio en data center para nuevo HW (Ru's) |  | 1d | 2025-10-03 A | 2025-10-03 A | 100% |  |  |  | BCI | 8h | 8h | Completo | ID08 |  | BCI - PM |  |
| 9 | 1.1.2.4 | Arribo de servidores DELL Preprod |  | 1d | 2025-10-08 A | 2025-10-08 A | 100% |  |  |  | BCI | 8h | 8h | Completo | ID09 |  | 6M - PM |  |
| 10 | 1.1.2.5 | Gestión de Ingreso hardware a data center BCI |  | 1d | 2025-10-06 A | 2025-10-06 A | 100% |  |  |  | Sixmanager, BCI | 8h | 8h | Completo | ID10 |  | 6M - PM |  |
| 11 | 1.1.2.6 | Disponibilidad de puertas para conectividad |  | 5d | 2025-10-06 A | 2025-10-10 A | 100% |  |  |  | BCI | 40h | 40h | Completo | ID11 |  | BCI - PM | falso |
| 12 | 1.1.2.7 | Direccionamiento IP VIP - Rango 161 |  | 3d | 2025-10-13 A | 2025-10-15 A | 100% |  |  |  | BCI | 24h | 24h | Completo | ID75 |  | BCI - PM |  |
| 13 | 1.1.2.8 | Rackeo y conectividad de equipos en Aconcagua (Encendido y sanity boot) |  | 2d | 2025-10-13 A | 2025-10-14 A | 100% |  |  |  | Sixmanager, BCI | 16h | 16h | Completo | ID12 |  | 6M - Equipo Técnico |  |
| 14 | 1.1.2.9 | Cotizacion de SFP para swich de Pre-Produccion |  | 2d | 2025-10-15 A | 2025-10-16 A | 100% |  |  |  | BCI | 16h | 16h | Completo | ID76 |  | BCI - PM |  |
| 15 | 1.1.2.10 | Ticket para asignacion de puertos del Director |  | 4d | 2025-10-17 A | 2025-10-22 A | 100% |  |  |  | BCI | 32h | 32h | Completo | ID77 |  |  |  |
| 16 | 1.1.2.11 | Infraestructura instalada | milestone | 0d | 2025-10-21 A | 2025-10-21 A | 100% |  |  |  |  |  |  | Completo | ID13 |  |  |  |
| 17 | 1.1.3 | **Plan de implementacion** |  | 42d | 2025-09-24 A | 2025-11-20 A | 100% |  |  |  |  | 732h | 732h | Completo | ID14 |  |  |  |
| 18 | 1.1.3.1 | Revisión y levantamiento de infraestructura actual |  | 5d | 2025-09-24 A | 2025-09-30 A | 100% |  |  |  | Sixmanager | 40h | 40h | Completo | ID15 |  | 6M - Equipo Técnico |  |
| 19 | 1.1.3.2 | Diseño detallado de arquitectura preproductiva |  | 8d | 2025-10-01 A | 2025-10-10 A | 100% |  |  |  | Sixmanager | 64h | 64h | Completo | ID16 | Enviada el dia Viernes 10/10 | 6M - Equipo Técnico | falso |
| 20 | 1.1.3.3 | Aprobación de diseño por parte del cliente |  | 1d | 2025-10-14 A | 2025-10-14 A | 100% |  |  |  | BCI | 8h | 8h | Completo | ID17 | Aprovada por cliente | BCI - PM | falso |
| 21 | 1.1.3.4 | **Prerrequisitos** |  | 22d | 2025-10-07 A | 2025-11-05 A | 100% |  |  |  |  | 400h | 400h | Completo | ID18 |  |  | falso |
| 22 | 1.1.3.4.1 | Entrega documento prerrequisitos |  | 1d | 2025-10-07 A | 2025-10-07 A | 100% |  |  |  | Sixmanager | 8h | 8h | Completo | ID19 | Enviados el día 07/10 | 6M - PM |  |
| 23 | 1.1.3.4.2 | Conectividad puertos de Fibra en servidores - Switch |  | 1d | 2025-10-21 A | 2025-10-21 A | 100% |  |  |  | Sixmanager, BCI | 8h | 8h | Completo | ID79 | Coordinado 21/10 | BCI - PM |  |
| 24 | 1.1.3.4.3 | Reglas de acceso (Permisos en firewall entre redes y hacia internet) |  | 2d | 2025-10-22 A | 2025-10-23 A | 100% |  |  |  | BCI | 16h | 16h | Completo | ID20 | En gestión con el equipo de seguridad | BCI - Equipo Seguridad |  |
| 25 | 1.1.3.4.4 | Registros DNS requeridos (Subdominios, registros tipo A, Reversos) |  | 2d | 2025-10-22 A | 2025-10-23 A | 100% |  |  |  | BCI | 16h | 16h | Completo | ID21 |  | BCI - Equipo DNS |  |
| 26 | 1.1.3.4.5 | Accesos a servicios de red (Load Balancer / NTP) |  | 11d | 2025-10-22 A | 2025-11-05 A | 100% |  |  |  | BCI | 88h | 88h | Completo | ID23 | En proceso por Seguridad de redes | BCI - Equipo Seguridad | verdadero |
| 27 | 1.1.3.4.6 | Usuario Portal de Red Hat |  | 1d | 2025-10-22 A | 2025-10-22 A | 100% |  |  |  | BCI | 8h | 8h | Completo | ID80 | Requerimiento enviado a A.Jilabert / J.Jara |  |  |

| ID | WBS | Task | Type | Duration | Start | Finish | Complete | Resources | Work | Actual work | Text1 | Text2 | Text4 | Text5 | Text3 |
| --- | --- | --- | --- | --- | --- | --- | --- | --- | --- | --- | --- | --- | --- | --- | --- |
| 28 | 1.1.3.4.7 | **Validación de Prerrequisitos** |  | 15d | 2025-10-16 A | 2025-11-05 A | 100% | Sixmanager | 256h | 256h | falso | Completo | 6M - Equipo Técnico | ID24 |  |
| 29 | 1.1.3.4.7.1 | Pruebas de conectividad remota a iDrac |  | 1d | 2025-10-16 A | 2025-10-16 A | 100% | Sixmanager | 8h | 8h |  | Completo |  | ID81 |  |
| 30 | 1.1.3.4.7.2 | Pruebas de conectividad de servidores a equipos de comunicaciones |  | 1d | 2025-10-21 A | 2025-10-21 A | 100% | Sixmanager | 8h | 8h |  | Completo |  | ID82 |  |
| 31 | 1.1.3.4.7.3 | Pruebas de conectividad Remota a servidores (1 servidor) |  | 1d | 2025-10-21 A | 2025-10-21 A | 100% | Sixmanager | 8h | 8h |  | Completo |  | ID83 |  |
| 32 | 1.1.3.4.7.4 | Validación de conectividad de servidores a SAN |  | 1d | 2025-10-21 A | 2025-10-21 A | 100% | Sixmanager | 8h | 8h |  | Completo |  | ID84 |  |
| 33 | 1.1.3.4.7.5 | Pruebas de resolución de nombres |  | 1d | 2025-10-24 A | 2025-10-24 A | 100% | Sixmanager | 8h | 8h |  | Completo |  | ID85 |  |
| 34 | 1.1.3.4.7.6 | Pruebas de acceso a internet |  | 1d | 2025-10-24 A | 2025-10-24 A | 100% | Sixmanager | 8h | 8h |  | Completo |  | ID86 |  |
| 35 | 1.1.3.4.7.7 | Pruebas de conexión hacia F5 |  | 9d | 2025-10-24 A | 2025-11-05 A | 100% | Sixmanager | 72h | 72h |  | Completo |  | ID87 |  |
| 36 | 1.1.3.4.7.8 | Pruebas de conexión hacia DNS |  | 1d | 2025-10-24 A | 2025-10-24 A | 100% | Sixmanager | 8h | 8h |  | Completo |  | ID88 |  |
| 37 | 1.1.3.4.7.9 | Pruebas de conexión hacia NTP |  | 1d | 2025-10-24 A | 2025-10-24 A | 100% | Sixmanager | 8h | 8h |  | Completo |  | ID89 |  |
| 38 | 1.1.3.4.8 | Prerrequisitos entregados | milestone | 0d | 2025-11-05 A | 2025-11-05 A | 100% |  |  |  |  | Completo |  | ID25 |  |
| 39 | 1.1.3.5 | **Integración Storage PowerStore 5200** |  | 13d | 2025-10-07 A | 2025-10-23 A | 100% |  | 48h | 48h |  | Completo |  | ID26 |  |
| 40 | 1.1.3.5.1 | Envío de prerrequisitos |  | 1d | 2025-10-07 A | 2025-10-07 A | 100% | Sixmanager | 8h | 8h |  | Completo | 6M - PM | ID27 | Despachados el día 07/10/25 |
| 41 | 1.1.3.5.2 | Zonificación de servidores |  | 1d | 2025-10-21 A | 2025-10-21 A | 100% | BCI | 8h | 8h |  | Completo |  | ID90 |  |
| 42 | 1.1.3.5.3 | Publicación de LUN para OLVM |  | 1d | 2025-10-23 A | 2025-10-23 A | 100% | BCI | 8h | 8h | falso | Completo | BCI - Equipo Storage | ID28 |  |
| 43 | 1.1.3.5.4 | Publicación de LUNS para BBDD DEV |  | 1d | 2025-10-23 A | 2025-10-23 A | 100% | BCI | 8h | 8h |  | Completo | BCI - Equipo Storage | ID29 |  |
| 44 | 1.1.3.5.5 | Publicación de LUNS para BBDD QA |  | 1d | 2025-10-23 A | 2025-10-23 A | 100% | BCI | 8h | 8h |  | Completo | BCI - Equipo Storage | ID30 |  |
| 45 | 1.1.3.5.6 | Publicación de LUNS para NFS (Provisorio previo a CSI) |  | 1d | 2025-10-23 A | 2025-10-23 A | 100% | BCI | 8h | 8h |  | Completo |  | ID91 |  |
| 46 | 1.1.3.5.7 | Integración Storage PowerStore 5200 finalizada | milestone | 0d | 2025-10-23 A | 2025-10-23 A | 100% |  |  |  |  | Completo |  | ID33 |  |
| 47 | 1.1.3.6 | **Habilitación Cluster Openshift Pre Productivo** |  | 12d | 2025-10-24 A | 2025-11-10 A | 100% |  | 48h | 48h | falso | Completo |  | ID34 |  |
| 48 | 1.1.3.6.1 | Preparar archivo de instalación |  | 1d | 2025-10-24 A | 2025-10-24 A | 100% | Sixmanager | 8h | 8h |  | Completo |  | ID92 |  |
| 49 | 1.1.3.6.2 | Descargar pull secret |  | 1d | 2025-10-24 A | 2025-10-24 A | 100% | Sixmanager | 8h | 8h |  | Completo |  | ID93 |  |
| 50 | 1.1.3.6.3 | Despliegue Openshift Bare Metal |  | 1d | 2025-11-06 A | 2025-11-06 A | 100% | Sixmanager | 8h | 8h | falso | Completo | 6M - Equipo Técnico | ID35 |  |
| 51 | 1.1.3.6.4 | Configuraciones Post Instalación |  | 1d | 2025-11-07 A | 2025-11-07 A | 100% | Sixmanager | 8h | 8h | falso | Completo | 6M - Equipo Técnico | ID36 |  |
| 52 | 1.1.3.6.5 | Integración con redes de cliente |  | 1d | 2025-11-10 A | 2025-11-10 A | 100% | Sixmanager | 8h | 8h | falso | Completo | 6M - Equipo Técnico | ID37 |  |
| 53 | 1.1.3.6.6 | Pruebas Funcionales |  | 1d | 2025-11-10 A | 2025-11-10 A | 100% | Sixmanager, BCI | 8h | 8h | falso | Completo | 6M - Equipo Técnico | ID39 |  |
| 54 | 1.1.3.6.7 | Cluster Preproductivo instalado | milestone | 0d | 2025-11-10 A | 2025-11-10 A | 100% |  |  |  |  | Completo |  | ID42 |  |

| ID | WBS | Task | Type | Duration | Start | Finish | Complete | Resources | Work | Actual work | Text2 | Text5 | Text4 | Text1 |
| --- | --- | --- | --- | --- | --- | --- | --- | --- | --- | --- | --- | --- | --- | --- |
| 55 | 1.1.3.7 | **Habilitación OLVM y BD** |  | 12d | 2025-10-24 A | 2025-11-10 A | 100% |  | 44h | 44h | Completo | ID43 |  |  |
| 56 | 1.1.3.7.1 | Instalación Hypervisor OLVM |  | 2d | 2025-11-06 A | 2025-11-07 A | 100% | Sixmanager | 16h | 16h | Completo | ID44 | 6M - Equipo Técnico |  |
| 57 | 1.1.3.7.2 | Integración de OLVM con Storage |  | 0.5d | 2025-10-24 A | 2025-10-24 A | 100% | Sixmanager, BCI | 4h | 4h | Completo | ID55 | 6M - Equipo Técnico |  |
| 58 | 1.1.3.7.3 | Habilitación Servidores B.D. |  | 1d | 2025-11-10 A | 2025-11-10 A | 100% | Sixmanager | 8h | 8h | Completo | ID45 | 6M - Equipo Técnico |  |
| 59 | 1.1.3.7.4 | Habilitación y configuración Base de datos StandAlone |  | 1d | 2025-11-10 A | 2025-11-10 A | 100% | Sixmanager | 8h | 8h | Completo | ID46 | 6M - Equipo Técnico |  |
| 60 | 1.1.3.7.5 | Integración con redes del cliente |  | 1d | 2025-11-10 A | 2025-11-10 A | 100% | Sixmanager, BCI | 8h | 8h | Completo | ID48 | 6M - Equipo Técnico |  |
| 61 | 1.1.3.7.6 | Habilitación OLVM y BD Finalizada | milestone | 0d | 2025-11-10 A | 2025-11-10 A | 100% |  |  |  | Completo | ID51 |  |  |
| 62 | 1.1.3.8 | **Despliegue de aplicaciones cliente en DEV/UAT/INT** |  | 8d | 2025-11-11 A | 2025-11-20 A | 100% |  | 80h | 80h | En progreso | ID61 |  |  |
| 63 | 1.1.3.8.1 | Revisión de prerrequisitos |  | 0.5d | 2025-11-11 A | 2025-11-11 A | 100% | Sixmanager, BCI, Calypso | 4h | 4h | Completo | ID63 | Calypso |  |
| 64 | 1.1.3.8.2 | Descarga de imagenes base |  | 0.5d | 2025-11-12 A | 2025-11-12 A | 100% | Sixmanager, BCI, Calypso | 4h | 4h | Completo | ID65 | Calypso |  |
| 65 | 1.1.3.8.3 | Confección de imagen y carga en registry local del Cluster |  | 1d | 2025-11-11 A | 2025-11-11 A | 100% | Sixmanager, BCI, Calypso | 8h | 8h | Completo | ID64 | Calypso |  |
| 66 | 1.1.3.8.4 | Integracion y despliegue de aplicación sobre OCP |  | 3d | 2025-11-13 A | 2025-11-17 A | 100% | Sixmanager, BCI, Calypso | 24h | 24h | Completo | ID66 | Calypso |  |
| 67 | 1.1.3.8.5 | Pruebas de aplicación |  | 2d | 2025-11-18 A | 2025-11-19 A | 100% | Sixmanager, BCI, Calypso | 16h | 16h | En progreso | ID67 | Calypso |  |
| 68 | 1.1.3.8.6 | Fin despliegue aplicación | milestone | 0d | 2025-11-19 A | 2025-11-19 A | 100% |  |  |  | En progreso | ID68 | Calypso |  |
| 69 | 1.1.3.8.7 | Pruebas de usuario |  | 3d | 2025-11-18 A | 2025-11-20 A | 100% | BCI | 24h | 24h | Completo | ID95 |  |  |
| 70 | 1.1.4 | Aplicación Calypso completamente Desplegada | milestone | 0d | 2025-11-19 A | 2025-11-19 A | 100% |  |  |  | En progreso | ID72 |  |  |
| 71 | 1.1.5 | **Integración de componentes Críticos** |  | 35d | 2025-09-24 A | 2025-11-11 A | 100% |  | 16h | 16h | En progreso | ID52 |  |  |
| 72 | 1.1.5.1 | Integración de OCP con B.D. |  | 1d | 2025-11-11 A | 2025-11-11 A | 100% | Sixmanager, BCI | 8h | 8h | Completo | ID53 | 6M - Equipo Técnico |  |
| 73 | 1.1.5.2 | Integración con repositorio Git |  | 1d | 2025-09-24 A | 2025-09-24 A | 100% | Sixmanager, BCI | 8h | 8h | En progreso | ID58 | 6M - Equipo Técnico |  |
| 74 | 1.1.5.3 | Fin Etapa integración | milestone | 0d | 2025-09-24 A | 2025-09-24 A | 100% |  |  |  | En progreso | ID60 |  |  |
| 75 | 1.1.6 | **Cierre formal de la Fase 1** |  | 10d | 2025-11-11 A | 2025-11-24 A | 100% |  | 40h | 40h | No se ha iniciado | ID69 |  |  |
| 76 | 1.1.6.1 | Preparación de Documentación Openshift |  | 2d | 2025-11-20 A | 2025-11-21 A | 100% | Sixmanager | 16h | 16h | No se ha iniciado | ID40 | 6M - Equipo Técnico | falso |
| 77 | 1.1.6.2 | Preparación Documentación BBDD + OLVM |  | 2d | 2025-11-11 A | 2025-11-12 A | 100% | Sixmanager | 16h | 16h | No se ha iniciado | ID49 | 6M - Equipo Técnico |  |
| 78 | 1.1.6.3 | Reunión de entrega de documentación y presentación de la solución |  | 1d | 2025-11-24 A | 2025-11-24 A | 100% | Sixmanager | 8h | 8h | No se ha iniciado | ID70 | 6M - Equipo Técnico |  |
| 79 | 1.1.6.4 | Soporte post implementación (evolutivo) | milestone | 0d | 2025-11-24 A | 2025-11-24 A | 100% | Sixmanager |  |  | No se ha iniciado | ID71 | 6M - Equipo Técnico |  |

| ID | WBS | Task | Type | Duration | Start | Finish | Predecessors | Complete | Remaining | Actual start | Total slack | Free slack | Resources | Work | Actual work | Text2 | Text5 | Text1 |
| --- | --- | --- | --- | --- | --- | --- | --- | --- | --- | --- | --- | --- | --- | --- | --- | --- | --- | --- |
| 80 | 1.2 | **Ambiente Productivo / DR** |  | 106d | 2026-01-05 A | 2026-06-01 |  | 6% | 99.89d |  | 46d |  |  | 1251h | 72h | No se ha iniciado |  |  |
| 81 | 1.2.1 | **Habilitacion de infrastructura fisica (Pre requisitos)** |  | 13d | 2026-01-07 | 2026-01-23 |  | 69% | 4d | 2026-01-05 |  |  |  | 104h | 72h |  |  |  |
| 82 | 1.2.1.1 | **Datacenter Aconcagua** |  | 5d | 2026-01-05 A | 2026-01-12 |  | 83% | 0.83d |  | 147d |  |  | 48h | 40h | No se ha iniciado |  |  |
| 83 | 1.2.1.1.1 | Direccionamiento IP / VLAN / PORT |  | 1d | 2026-01-05 A | 2026-01-05 A |  | 100% |  |  |  |  | BCI | 8h | 8h | No se ha iniciado |  |  |
| 84 | 1.2.1.1.2 | Gestión de accesos al datacenter (para conectividad de red de equipos) |  | 1d | 2026-01-06 A | 2026-01-06 A | 83 | 100% |  |  |  |  | BCI | 8h | 8h | No se ha iniciado |  |  |
| 85 | 1.2.1.1.3 | Espacio en data center para nuevo HW (Ru's) |  | 1d | 2026-01-07 A | 2026-01-07 A | 84 | 100% |  |  |  |  | BCI | 8h | 8h | No se ha iniciado |  |  |
| 86 | 1.2.1.1.4 | Arribo de servidores DELL Producción |  | 1d | 2026-01-08 A | 2026-01-08 A | 85 | 100% |  |  |  |  | Sixmanager | 8h | 8h | No se ha iniciado | 10 |  |
| 87 | 1.2.1.1.5 | Ingreso hardware a data center BCI |  | 1d | 2026-01-09 A | 2026-01-09 A | 86 | 100% |  |  |  |  | Sixmanager | 8h | 8h | No se ha iniciado | 11 |  |
| 88 | 1.2.1.1.6 | Disponibilidad de puertas para conectividad |  | 1d | 2026-01-09 | 2026-01-09 | 86 |  |  |  | 147d |  | BCI | 8h |  | No se ha iniciado | 12 |  |
| 89 | 1.2.1.1.7 | Rackeo y conecticvidad de equipos en Aconcagua (Encendido y sanity boot) | milestone | 0d | 2026-01-12 A | 2026-01-12 A | 87 | 100% |  |  |  |  | Sixmanager |  |  | No se ha iniciado | 13 |  |
| 90 | 1.2.1.2 | **Datacenter Longovilo** |  | 7d | 2026-01-13 A | 2026-01-21 |  | 57% | 3d |  |  |  |  | 56h | 32h | No se ha iniciado | 14 |  |
| 91 | 1.2.1.2.1 | Direccionamiento IP / VLAN / PORT |  | 1d | 2026-01-13 A | 2026-01-13 A | 89 | 100% |  |  |  |  | BCI | 8h | 8h | No se ha iniciado | 15 |  |
| 92 | 1.2.1.2.2 | Gestión de accesos al datacenter (para ingreso de equipos) |  | 1d | 2026-01-13 A | 2026-01-14 A | 91 | 100% |  |  |  |  | BCI | 8h | 8h | No se ha iniciado | 16 |  |
| 93 | 1.2.1.2.3 | Espacio en data center para nuevo HW (Ru's) |  | 1d | 2026-01-14 A | 2026-01-15 A | 92 | 100% |  |  |  |  | BCI | 8h | 8h | No se ha iniciado | 17 |  |
| 94 | 1.2.1.2.4 | Arribo de servidores DELL DR |  | 1d | 2026-01-15 A | 2026-01-16 A | 93 | 100% |  |  |  |  | BCI | 8h | 8h | No se ha iniciado | 18 |  |
| 95 | 1.2.1.2.5 | Ingreso hardware a data center BCI |  | 1d | 2026-01-16 | 2026-01-19 | 94 |  |  |  | 111d | 0d | Sixmanager, BCI | 8h |  | No se ha iniciado | 19 |  |
| 96 | 1.2.1.2.6 | Disponibilidad de puertas para conectividad |  | 1d | 2026-01-19 | 2026-01-20 | 95 |  |  |  | 111d | 0d | BCI | 8h |  | No se ha iniciado | 20 | falso |
| 97 | 1.2.1.2.7 | Rackeo y conecticvidad de equipos en Longovilo(Encendido y sanity boot) |  | 1d | 2026-01-20 | 2026-01-21 | 96 |  |  |  | 111d | 0d | Sixmanager, BCI | 8h |  | No se ha iniciado | 21 |  |
| 98 | 1.2.1.3 | Infraestructura Productiva instalada | milestone, manual | 0d | 2026-01-21 | 2026-01-21 | 97 |  |  |  |  |  | Sixmanager, BCI |  |  | No se ha iniciado | 22 |  |
| 99 | 1.2.2 | **Plan de implementacion** |  | 93.25d | 2026-01-22 | 2026-06-01 |  |  |  |  |  |  |  | 1147h |  |  | 23 |  |
| 100 | 1.2.2.1 | Revisión y levantamiento de infraestructura actual |  | 1d | 2026-01-22 | 2026-01-22 | 97 |  |  |  | 111d | 0d | Sixmanager | 8h |  | No se ha iniciado | 24 |  |
| 101 | 1.2.2.2 | Diseño detallado de arquitectura preproductiva |  | 1d | 2026-01-22 | 2026-01-23 | 100 |  |  |  | 111d | 0d | Sixmanager | 8h |  | No se ha iniciado | 25 | falso |
| 102 | 1.2.2.3 | Aprobación de diseño por parte del cliente | milestone | 0d | 2026-01-23 | 2026-01-23 | 101 |  |  |  | 111d | 1d | BCI |  |  | No se ha iniciado | 26 | falso |
| 103 | 1.2.2.4 | **Prerrequisitos** |  | 22d | 2026-01-27 | 2026-02-25 |  |  |  |  | 0d |  |  | 176h |  |  | 27 | falso |
| 104 | 1.2.2.4.1 | **Prerrequisitos Producción** |  | 12d | 2026-01-27 | 2026-02-11 |  |  |  |  |  |  |  | 80h |  | No se ha iniciado | 28 |  |
| 105 | 1.2.2.4.1.1 | Entrega documento prerrequisitos Producción |  | 2d | 2026-01-27 | 2026-01-28 | 102 |  |  |  | 110d | 0d | Sixmanager | 16h |  | No se ha iniciado | 29 |  |
| 106 | 1.2.2.4.1.2 | Reglas de acceso (Permisos en firewall entre redes y hacia internet) |  | 2d | 2026-01-28 | 2026-01-30 | 105 |  |  |  | 110d | 0d | Sixmanager, BCI | 16h |  | No se ha iniciado | 30 |  |
| 107 | 1.2.2.4.1.3 | Registros DNS requeridos (Subdominios, registros tipo A, Reversos) |  | 2d | 2026-01-30 | 2026-02-03 | 106 |  |  |  | 110d | 0d | Sixmanager, BCI | 16h |  | No se ha iniciado | 31 |  |
| 108 | 1.2.2.4.1.4 | Generación de certificados |  | 2d | 2026-02-03 | 2026-02-05 | 107 |  |  |  | 110d | 0d | Sixmanager, BCI | 16h |  | No se ha iniciado | 32 |  |
| 109 | 1.2.2.4.1.5 | Accesos a servicios de red (Load Balancer / NTP) |  | 2d | 2026-02-05 | 2026-02-09 | 108 |  |  |  | 110d | 0d | Sixmanager, BCI | 16h |  | No se ha iniciado | 33 |  |
| 110 | 1.2.2.4.1.6 | Validación de Prerrequisitos | milestone | 0d | 2026-02-09 | 2026-02-09 | 109 |  |  |  | 126d |  | Sixmanager, BCI |  |  | No se ha iniciado | 34 |  |

| ID | WBS | Task | Type | Duration | Start | Finish | Predecessors | Total slack | Free slack | Resources | Work | Text2 | Text5 | Text3 | Text1 |
| --- | --- | --- | --- | --- | --- | --- | --- | --- | --- | --- | --- | --- | --- | --- | --- |
| 111 | 1.2.2.4.2 | **Prerrequisitos DR** |  | 12d | 2026-02-10 | 2026-02-25 |  |  |  |  | 96h | No se ha iniciado | 35 |  |  |
| 112 | 1.2.2.4.2.1 | Entrega documento prerrequisitos |  | 2d | 2026-02-10 | 2026-02-11 | 109 | 110d | 0d | Sixmanager | 16h | No se ha iniciado | 36 | Enviados el día 07/10 |  |
| 113 | 1.2.2.4.2.2 | Reglas de acceso (Permisos en firewall entre redes y hacia internet) |  | 2d | 2026-02-11 | 2026-02-13 | 112 | 110d | 0d | BCI | 16h | No se ha iniciado | 37 | En gestión con el equipo de seguridad | falso |
| 114 | 1.2.2.4.2.3 | Registros DNS requeridos (Subdominios, registros tipo A, Reversos) |  | 2d | 2026-02-13 | 2026-02-17 | 113 | 110d | 0d | BCI | 16h | No se ha iniciado | 38 |  | falso |
| 115 | 1.2.2.4.2.4 | Generación de certificados |  | 2d | 2026-02-17 | 2026-02-19 | 114 | 110d | 0d | BCI | 16h | No se ha iniciado | 39 |  | falso |
| 116 | 1.2.2.4.2.5 | Accesos a servicios de red (Load Balancer / NTP) |  | 2d | 2026-02-19 | 2026-02-23 | 115 | 110d | 0d | BCI | 16h | No se ha iniciado | 40 |  | falso |
| 117 | 1.2.2.4.2.6 | Validación de Prerrequisitos |  | 2d | 2026-02-23 | 2026-02-25 | 116 | 110d | 0d | Sixmanager | 16h | No se ha iniciado | 41 |  | falso |
| 118 | 1.2.2.4.3 | Prerrequisitos entregados | milestone | 0d | 2026-02-25 | 2026-02-25 | 117 | 110d | 1d | BCI |  | No se ha iniciado | 42 |  |  |
| 119 | 1.2.2.5 | **Integración Storage Datacenter Aconcagua** |  | 11.25d | 2026-02-27 | 2026-03-13 |  |  |  |  | 48h |  | 43 |  |  |
| 120 | 1.2.2.5.1 | Zonificación |  | 1d | 2026-02-27 | 2026-02-27 | 118 | 109d | 0d | BCI | 8h | No se ha iniciado | 44 |  |  |
| 121 | 1.2.2.5.2 | Envío de prerrequisitos |  | 1d | 2026-02-27 | 2026-03-02 | 120 | 109d | 0d | Sixmanager | 8h | No se ha iniciado | 45 |  |  |
| 122 | 1.2.2.5.3 | Publicación de LUN para OLVM |  | 1d | 2026-03-02 | 2026-03-03 | 121 | 109d | 0d | BCI | 8h | No se ha iniciado | 46 |  |  |
| 123 | 1.2.2.5.4 | Publicación de LUNS para BBDD Productiva |  | 1d | 2026-03-03 | 2026-03-04 | 122 | 109d |  | BCI | 8h | No se ha iniciado | 47 |  |  |
| 124 | 1.2.2.5.5 | Creación de accesos para driver CSI y publicación de volumen |  | 1d | 2026-02-27 | 2026-02-27 |  | 101d | 0d | BCI | 8h | No se ha iniciado | 49 |  |  |
| 125 | 1.2.2.5.6 | Pruebas de conectividad hacia storage |  | 1d | 2026-02-27 | 2026-03-02 | 124 | 101d | 0d | Sixmanager, BCI | 8h | No se ha iniciado | 50 |  |  |
| 126 | 1.2.2.5.7 | Integración Storage Aconcagua finalizada | milestone | 0d | 2026-03-02 | 2026-03-02 | 125 | 101d | 6d | Sixmanager, BCI |  | No se ha iniciado | 51 |  |  |
| 127 | 1.2.2.6 | **Integración Storage Datacenter Longovilo** |  | 8d | 2026-02-27 | 2026-03-10 |  |  |  |  | 48h |  | 102 |  |  |
| 128 | 1.2.2.6.1 | Zonificación |  | 1d | 2026-02-27 | 2026-02-27 |  | 100d |  | BCI | 8h | No se ha iniciado | 103 |  |  |
| 129 | 1.2.2.6.2 | Envío de prerrequisitos |  | 1d | 2026-02-27 | 2026-02-27 |  | 100d |  | Sixmanager | 8h | No se ha iniciado | 104 |  |  |
| 130 | 1.2.2.6.3 | Publicación de LUN para OLVM |  | 1d | 2026-02-27 | 2026-02-27 |  | 100d |  | BCI | 8h | No se ha iniciado | 105 |  |  |
| 131 | 1.2.2.6.4 | Publicación de LUNS para BBDD Productiva |  | 1d | 2026-02-27 | 2026-02-27 |  | 100d |  | BCI | 8h | No se ha iniciado | 106 |  |  |
| 132 | 1.2.2.6.5 | Creación de accesos para driver CSI y publicación de volumen |  | 1d | 2026-02-27 | 2026-02-27 |  | 100d |  | BCI | 8h | No se ha iniciado | 107 |  |  |
| 133 | 1.2.2.6.6 | Pruebas de conectividad hacia storage |  | 1d | 2026-02-27 | 2026-02-27 |  | 100d | 0d | BCI | 8h | No se ha iniciado | 108 |  |  |
| 134 | 1.2.2.6.7 | Integración Storage Longovilo finalizada | milestone | 0d | 2026-02-27 | 2026-02-27 | 133 | 100d |  | Sixmanager, BCI |  | No se ha iniciado | 109 |  |  |

| ID | WBS | Task | Type | Duration | Start | Finish | Predecessors | Total slack | Free slack | Resources | Work | Text1 | Text5 | Text2 |
| --- | --- | --- | --- | --- | --- | --- | --- | --- | --- | --- | --- | --- | --- | --- |
| 135 | 1.2.2.7 | **Habilitación Cluster Openshift Productivo** |  | 39d | 2026-03-11 | 2026-05-04 | 127 |  |  |  | 96h | falso | 52 |  |
| 136 | 1.2.2.7.1 | Despliegue Openshift Bare Metal |  | 2d | 2026-03-11 | 2026-03-12 | 126 | 95d | 0d | Sixmanager | 16h | falso | 53 | No se ha iniciado |
| 137 | 1.2.2.7.2 | Configuraciones Post Instalación |  | 2d | 2026-03-12 | 2026-03-16 | 136 | 95d | 0d | Sixmanager | 16h | falso | 54 | No se ha iniciado |
| 138 | 1.2.2.7.3 | Integración con redes de cliente |  | 2d | 2026-03-16 | 2026-03-18 | 137 | 95d | 0d | Sixmanager | 16h | falso | 55 | No se ha iniciado |
| 139 | 1.2.2.7.4 | Habilitación de operador CSI |  | 2d | 2026-03-18 | 2026-03-20 | 138 | 95d | 0d | Sixmanager | 16h | falso | 56 | No se ha iniciado |
| 140 | 1.2.2.7.5 | Pruebas Funcionales |  | 2d | 2026-03-20 | 2026-03-24 | 139 | 95d |  | Sixmanager, BCI | 16h | falso | 57 | No se ha iniciado |
| 141 | 1.2.2.7.6 | Sesión de entrega |  | 2d | 2026-03-11 | 2026-03-12 |  | 93d | 0d | Sixmanager, BCI | 16h | falso | 59 | No se ha iniciado |
| 142 | 1.2.2.7.7 | Cluster Preproductivo instalado | milestone | 0d | 2026-03-12 | 2026-03-12 | 141 | 93d | 0d | Sixmanager |  |  | 60 | No se ha iniciado |
| 143 | 1.2.2.8 | **Habilitación OLVM y BD Producción** |  | 29.25d | 2026-03-12 | 2026-04-21 |  |  |  |  | 460h |  | 61 |  |
| 144 | 1.2.2.8.1 | Instalación OLVM |  | 2d | 2026-03-12 | 2026-03-16 | 142 | 93d | 0d | Sixmanager | 16h |  | 62 | No se ha iniciado |
| 145 | 1.2.2.8.2 | Habilitación Servidores B.D. |  | 2d | 2026-03-16 | 2026-03-18 | 144 | 93d | 0d | Sixmanager | 16h |  | 63 | No se ha iniciado |
| 146 | 1.2.2.8.3 | Habilitación y configuración Base de datos Oracle Rac |  | 2d | 2026-03-18 | 2026-03-20 | 145 | 93d | 0d | Sixmanager | 16h |  | 64 | No se ha iniciado |
| 147 | 1.2.2.8.4 | Configuración Dataguard |  | 2d | 2026-03-20 | 2026-03-24 | 146 | 93d | 0d | Sixmanager | 16h |  | 65 | No se ha iniciado |
| 148 | 1.2.2.8.5 | Integración con redes del cliente |  | 2d | 2026-03-24 | 2026-03-26 | 147 | 93d |  | Sixmanager, BCI | 16h |  | 66 | No se ha iniciado |
| 149 | 1.2.2.8.6 | Pruebas funcionales HA | manual | 2.12d | 2026-03-24 | 2026-03-27 |  |  |  | Sixmanager, BCI | 18h |  | 110 | No se ha iniciado |
| 150 | 1.2.2.8.7 | Creación de Esquemas de BD | manual | 2.12d | 2026-03-24 | 2026-03-27 |  |  |  | Sixmanager, BCI | 18h |  | 111 | No se ha iniciado |
| 151 | 1.2.2.8.8 | Sesión de entrega |  | 2d | 2026-03-12 | 2026-03-13 |  | 53d | 0d | Sixmanager, BCI | 16h |  | 68 | No se ha iniciado |
| 152 | 1.2.2.8.9 | Habilitación OLVM y BD Finalizada | milestone | 0d | 2026-03-13 | 2026-03-13 | 151 | 53d | 27d | Sixmanager |  |  | 69 | No se ha iniciado |
| 153 | 1.2.2.8.10 | **Habilitación Cluster Openshift DR** |  | 14.25d | 2026-03-12 | 2026-03-31 |  |  |  |  | 96h | falso | 112 |  |
| 154 | 1.2.2.8.10.1 | Despliegue Openshift Bare Metal |  | 2d | 2026-03-12 | 2026-03-13 | 126 | 94d | 0d | Sixmanager | 16h | falso | 113 | No se ha iniciado |
| 155 | 1.2.2.8.10.2 | Configuraciones Post Instalación |  | 2d | 2026-03-13 | 2026-03-17 | 154 | 94d | 0d | Sixmanager | 16h | falso | 114 | No se ha iniciado |
| 156 | 1.2.2.8.10.3 | Integración con redes de cliente |  | 2d | 2026-03-17 | 2026-03-19 | 155 | 94d | 0d | Sixmanager | 16h | falso | 115 | No se ha iniciado |
| 157 | 1.2.2.8.10.4 | Habilitación de operador CSI |  | 2d | 2026-03-19 | 2026-03-23 | 156 | 94d | 0d | Sixmanager | 16h | falso | 116 | No se ha iniciado |
| 158 | 1.2.2.8.10.5 | Pruebas Funcionales |  | 2d | 2026-03-23 | 2026-03-25 | 157 | 94d |  | Sixmanager, BCI | 16h | falso | 117 | No se ha iniciado |
| 159 | 1.2.2.8.10.6 | Sesión de entrega |  | 2d | 2026-03-12 | 2026-03-13 |  | 102d | 0d | Sixmanager, BCI | 16h | falso | 118 | No se ha iniciado |
| 160 | 1.2.2.8.10.7 | Cluster Preproductivo instalado | milestone | 0d | 2026-03-13 | 2026-03-13 | 159 | 102d |  | Sixmanager |  |  | 119 | No se ha iniciado |

| ID | WBS | Task | Type | Duration | Start | Finish | Predecessors | Total slack | Free slack | Resources | Work | Text5 | Text2 |
| --- | --- | --- | --- | --- | --- | --- | --- | --- | --- | --- | --- | --- | --- |
| 161 | 1.2.2.8.11 | **Habilitación OLVM y BD DR** |  | 15.25d | 2026-04-01 | 2026-04-21 |  |  |  |  | 232h | 120 |  |
| 162 | 1.2.2.8.11.1 | Instalación OLVM |  | 2d | 2026-04-01 | 2026-04-02 | 142 | 80d | 0d | Sixmanager | 16h | 121 | No se ha iniciado |
| 163 | 1.2.2.8.11.2 | Habilitación Servidores B.D. |  | 2d | 2026-04-02 | 2026-04-06 | 162 | 80d | 0d | Sixmanager | 16h | 122 | No se ha iniciado |
| 164 | 1.2.2.8.11.3 | Habilitación y configuración Base de datos Oracle Rac |  | 2d | 2026-04-06 | 2026-04-08 | 163 | 80d | 0d | Sixmanager | 16h | 123 | No se ha iniciado |
| 165 | 1.2.2.8.11.4 | Configuración Dataguard |  | 2d | 2026-04-08 | 2026-04-10 | 164 | 80d | 0d | Sixmanager | 16h | 124 | No se ha iniciado |
| 166 | 1.2.2.8.11.5 | Integración con redes del cliente |  | 2d | 2026-04-10 | 2026-04-14 | 165 | 80d |  | Sixmanager, BCI | 16h | 125 | No se ha iniciado |
| 167 | 1.2.2.8.11.6 | Pruebas funcionales HA | manual | 10d | 2026-04-10 | 2026-04-24 |  |  |  | Sixmanager, BCI | 80h | 126 | No se ha iniciado |
| 168 | 1.2.2.8.11.7 | Creación de Esquemas de BD | manual | 5d | 2026-04-10 | 2026-04-17 |  |  |  | Sixmanager, BCI | 40h | 127 | No se ha iniciado |
| 169 | 1.2.2.8.11.8 | Sesión de entrega |  | 2d | 2026-04-01 | 2026-04-02 |  | 88d | 0d | Sixmanager, BCI | 16h | 128 | No se ha iniciado |
| 170 | 1.2.2.8.11.9 | Habilitación OLVM y BD Finalizada | milestone | 0d | 2026-04-02 | 2026-04-02 | 169 | 88d |  | Sixmanager |  | 129 | No se ha iniciado |
| 171 | 1.2.2.8.11.10 | **Plan de pruebas Replicación de LUNS** |  | 2d | 2026-04-01 | 2026-04-02 |  | 88d |  |  | 16h | 130 |  |
| 172 | 1.2.2.8.11.10.1 | Reunión de definiciones |  | 2d | 2026-04-01 | 2026-04-02 | 142 | 88d | 0d | Sixmanager | 16h | 131 | No se ha iniciado |
| 173 | 1.2.2.8.11.10.2 | Pruebas de replica y restauración de LUNS | milestone | 0d | 2026-04-02 | 2026-04-02 | 172 | 88d |  | Sixmanager |  | 132 | No se ha iniciado |
| 174 | 1.2.2.9 | **Integración de componentes** |  | 15.25d | 2026-04-22 | 2026-05-12 |  |  |  |  | 112h | 70 |  |
| 175 | 1.2.2.9.1 | Integración de OCP con B.D. |  | 2d | 2026-04-22 | 2026-04-23 | 152 | 26d | 0d | Sixmanager, BCI | 16h | 71 | No se ha iniciado |
| 176 | 1.2.2.9.2 | Integración de OCP con Storage vía CSI |  | 2d | 2026-04-23 | 2026-04-27 | 175 | 26d | 0d | Sixmanager, BCI | 16h | 72 | No se ha iniciado |
| 177 | 1.2.2.9.3 | Integración de OLVM con Storage |  | 2d | 2026-04-27 | 2026-04-29 | 176 | 26d | 0d | Sixmanager, BCI | 16h | 73 | No se ha iniciado |
| 178 | 1.2.2.9.4 | Integración con Observabilidad y monitoreo de cliente (Nagios - Dynatrace) |  | 2d | 2026-04-29 | 2026-05-01 | 177 | 26d | 0d | Sixmanager, BCI | 16h | 74 | No se ha iniciado |
| 179 | 1.2.2.9.5 | Integración Active Directory |  | 2d | 2026-05-01 | 2026-05-05 | 178 | 26d | 0d | Sixmanager, BCI | 16h | 75 | No se ha iniciado |
| 180 | 1.2.2.9.6 | Integración con repositorio Git |  | 2d | 2026-05-05 | 2026-05-07 | 179 | 26d | 0d | Sixmanager, BCI | 16h | 76 | No se ha iniciado |
| 181 | 1.2.2.9.7 | Integración con Respaldos de cliente |  | 2d | 2026-05-07 | 2026-05-11 | 180 | 26d | 0d | Sixmanager, BCI | 16h | 77 | No se ha iniciado |
| 182 | 1.2.2.9.8 | Fin Etapa integración | milestone | 0d | 2026-05-11 | 2026-05-11 | 181 | 26d | 0d |  |  | 78 | No se ha iniciado |
| 183 | 1.2.2.10 | **Despliegue de aplicaciones Producción / DR** |  | 10d | 2026-05-11 | 2026-05-25 |  | 0d |  |  | 191h | 79 |  |
| 184 | 1.2.2.10.1 | Revisión de prerrequisitos |  | 2d | 2026-05-11 | 2026-05-13 | 182 | 26d | 0d | Sixmanager, BCI, Calypso | 16h | 81 | No se ha iniciado |
| 185 | 1.2.2.10.2 | Definicion de rutas productivas (*) | milestone, manual | 0d | 2026-05-12 | 2026-05-13 |  |  |  | Sixmanager, BCI, Calypso |  | 140 | No se ha iniciado |
| 186 | 1.2.2.10.3 | Despliegue de aplicaciones en GIT |  | 2d | 2026-05-13 | 2026-05-15 | 184 | 26d | 0d | Sixmanager, BCI, Calypso | 16h | 82 | No se ha iniciado |
| 187 | 1.2.2.10.4 | Construcción de imagen y compilación de aplicación |  | 2d | 2026-05-15 | 2026-05-19 | 186 | 26d | 0d | Sixmanager, BCI, Calypso | 16h | 83 | No se ha iniciado |
| 188 | 1.2.2.10.5 | Carga de imagen a registry | manual | 2d | 2026-05-18 | 2026-05-19 |  |  |  | Sixmanager, BCI, Calypso | 15h | 133 | No se ha iniciado |
| 189 | 1.2.2.10.6 | Creación de archivos deployment |  | 2d | 2026-05-19 | 2026-05-21 | 187 | 26d | 0d | Sixmanager, BCI, Calypso | 16h | 84 | No se ha iniciado |
| 190 | 1.2.2.10.7 | Creación de variables de ambientes por módulos |  | 2d | 2026-05-21 | 2026-05-25 | 189 | 26d | 0d | Sixmanager, BCI, Calypso | 16h | 85 | No se ha iniciado |
| 191 | 1.2.2.10.8 | Crear PV para cada aplicación | manual | 2d | 2026-05-21 | 2026-05-25 |  |  |  | Sixmanager, BCI, Calypso | 16h | 134 | No se ha iniciado |
| 192 | 1.2.2.10.9 | Crear PVC para cada aplicación | manual | 2d | 2026-05-21 | 2026-05-25 |  |  |  | Sixmanager, BCI, Calypso | 16h | 135 | No se ha iniciado |
| 193 | 1.2.2.10.10 | Subida de aplicación y pruebas de conectividad | manual | 2d | 2026-05-21 | 2026-05-25 |  |  |  | Sixmanager, BCI, Calypso | 16h | 136 | No se ha iniciado |
| 194 | 1.2.2.10.11 | Creación de rutas de Servicios | manual | 2d | 2026-05-21 | 2026-05-25 |  |  |  | Sixmanager, BCI, Calypso | 16h | 137 | No se ha iniciado |
| 195 | 1.2.2.10.12 | Creación de rutas externas | manual | 2d | 2026-05-21 | 2026-05-25 |  |  |  | Sixmanager, BCI, Calypso | 16h | 138 | No se ha iniciado |
| 196 | 1.2.2.10.13 | Pruebas de aplicación | manual | 2d | 2026-05-21 | 2026-05-25 |  |  |  | Sixmanager, BCI, Calypso | 16h | 139 | No se ha iniciado |
| 197 | 1.2.2.10.14 | Fin despliegue aplicación | milestone | 0d | 2026-05-25 | 2026-05-25 | 190 | 26d | 0d | Sixmanager, BCI, Calypso |  | 86 | No se ha iniciado |

| ID | WBS | Task | Type | Duration | Start | Finish | Predecessors | Complete | Remaining | Actual start | Total slack | Free slack | Resources | Work | Actual work | Text5 | Text2 | Text4 | Text1 |
| --- | --- | --- | --- | --- | --- | --- | --- | --- | --- | --- | --- | --- | --- | --- | --- | --- | --- | --- | --- |
| 198 | 1.2.3 | **Cierre formal de la Fase Producción** |  | 0d | 2026-05-25 | 2026-05-25 |  |  |  |  | 26d |  |  |  |  | 87 |  |  |  |
| 199 | 1.2.3.1 | Reunión de entrega de documentación y presentación de la solución | milestone | 0d | 2026-05-25 | 2026-05-25 | 197 |  |  |  | 26d | 0d | Sixmanager |  |  | 88 | No se ha iniciado |  |  |
| 200 | 1.3 | **Paso a Producción** |  | 102d | 2026-01-18 A | 2026-06-09 |  | 3% | 99.05d |  | 40d |  |  | 360.01h | 6.4h | 90 | No se ha iniciado |  |  |
| 201 | 1.3.1 | **Preparación de ambientes DEV para Operación** |  | 12.25d | 2026-01-18 | 2026-02-02 |  | 6% | 11.53d | 2026-01-19 |  |  |  | 176.01h | 6.4h | 141 | En progreso |  |  |
| 202 | 1.3.1.1 | Integración con Observabilidad y monitoreo de cliente (Nagios - Dynatrace) |  | 3d | 2026-01-19 A | 2026-01-21 |  | 8% | 2.77d |  | 139d |  | Sixmanager, BCI | 24h | 0.8h | 142 | En progreso | 6M - Equipo Técnico |  |
| 203 | 1.3.1.2 | Integración Active Directory |  | 3d | 2026-01-19 A | 2026-01-21 |  | 6% | 2.83d |  | 139d |  | Sixmanager, BCI | 24h | 0.4h | 143 | En progreso | 6M - Equipo Técnico |  |
| 204 | 1.3.1.3 | Integración con Respaldos de cliente |  | 3d | 2026-01-19 A | 2026-01-21 |  | 6% | 2.83d |  | 139d |  | Sixmanager, BCI | 24h | 0.4h | 144 | En progreso | 6M - Equipo Técnico |  |
| 205 | 1.3.1.4 | Generación de certificados (No mandatorio para la instalación) |  | 3d | 2026-01-19 A | 2026-01-21 |  | 8% | 2.77d |  | 139d |  | BCI | 24h | 0.8h | 145 | En progreso | BCI - Equipo DNS | falso |
| 206 | 1.3.1.5 | Monitoreo del Cluster |  | 10d | 2026-01-19 A | 2026-01-30 |  | 5% | 9.5d |  | 132d | 0d | Sixmanager | 80h | 4h | 146 | En progreso | 6M - Equipo Técnico |  |
| 207 | 1.3.1.6 | Cluster DEV listo para operación | milestone | 0d | 2026-01-30 | 2026-01-30 | 206 |  |  |  | 132d |  | Sixmanager, BCI |  |  | 147 | No se ha iniciado |  |  |
| 208 | 1.3.2 | **Preparación de ambientes PROD para Operación** |  | 6d | 2026-05-25 | 2026-06-02 |  |  |  |  | 26d |  |  | 48h |  | 148 |  |  |  |
| 209 | 1.3.2.1 | Integración con Observabilidad y monitoreo de cliente (Nagios - Dynatrace) |  | 2d | 2026-05-25 | 2026-05-27 | 199 |  |  |  | 26d | 0d | Sixmanager, BCI | 16h |  | 149 | En progreso | 6M - Equipo Técnico |  |
| 210 | 1.3.2.2 | Integración Active Directory |  | 1d | 2026-05-27 | 2026-05-28 | 209 |  |  |  | 26d | 0d | Sixmanager, BCI | 8h |  | 150 | En progreso | 6M - Equipo Técnico |  |
| 211 | 1.3.2.3 | Integración con Respaldos de cliente |  | 1d | 2026-05-28 | 2026-05-29 | 210 |  |  |  | 26d | 0d | Sixmanager, BCI | 8h |  | 151 | En progreso | 6M - Equipo Técnico |  |
| 212 | 1.3.2.4 | Generación de certificados (No mandatorio para la instalación) |  | 2d | 2026-05-29 | 2026-06-02 | 211 |  |  |  | 26d | 0d | BCI | 16h |  | 152 | En progreso | BCI - Equipo DNS | falso |
| 213 | 1.3.2.5 | Monitoreo del Cluster | milestone | 0d | 2026-06-02 | 2026-06-02 | 212 |  |  |  | 26d | 0d | Sixmanager |  |  | 153 | En progreso | 6M - Equipo Técnico |  |
| 214 | 1.3.2.6 | Cluster Producción listo para operación | milestone | 0d | 2026-06-02 | 2026-06-02 | 213 |  |  |  | 26d | 0d | Sixmanager, BCI |  |  | 154 | No se ha iniciado |  |  |
| 215 | 1.3.3 | Incorporación a sistema de monitoreo Sixmanager |  | 5d | 2026-06-02 | 2026-06-09 | 214 |  |  |  | 26d | 0d | Sixmanager | 40h |  | 91 | No se ha iniciado |  |  |
| 216 | 1.3.4 | Traspaso a área de Administración | milestone | 0d | 2026-06-09 | 2026-06-09 | 215 |  |  |  | 26d | 0d | Sixmanager |  |  | 92 | No se ha iniciado |  |  |
| 217 | 1.3.5 | **Plan de DR** |  | 18.25d | 2026-02-23 | 2026-03-18 |  |  |  |  |  |  |  | 96h |  | 93 | No se ha iniciado |  |  |
| 218 | 1.3.5.1 | Definición de SLA y condiciones | milestone | 0d | 2026-02-23 | 2026-02-23 |  |  |  |  | 117d |  | Sixmanager, BCI |  |  | 94 | No se ha iniciado |  |  |
| 219 | 1.3.5.2 | **Construcción de procedimientos** |  | 3d | 2026-05-25 | 2026-05-28 |  |  |  |  | 48d |  |  | 96h |  | 95 | No se ha iniciado |  |  |
| 220 | 1.3.5.2.1 | Openshift |  | 3d | 2026-05-25 | 2026-05-28 | 199 |  |  |  | 48d |  | Sixmanager | 24h |  | 96 | No se ha iniciado |  |  |
| 221 | 1.3.5.2.2 | Bases de Datos |  | 3d | 2026-05-25 | 2026-05-28 | 199 |  |  |  | 48d |  | Sixmanager | 24h |  | 97 | No se ha iniciado |  |  |
| 222 | 1.3.5.2.3 | Hypervisor |  | 3d | 2026-05-25 | 2026-05-28 | 199 |  |  |  | 48d |  | Sixmanager | 24h |  | 98 | No se ha iniciado |  |  |
| 223 | 1.3.5.2.4 | Calypso |  | 3d | 2026-05-25 | 2026-05-28 | 199 |  |  |  | 48d |  | Sixmanager | 24h |  | 99 | No se ha iniciado |  |  |
| 224 | 1.3.6 | Incorporación a sistema de tickets | milestone | 0d | 2026-06-09 | 2026-06-09 | 216 |  |  |  | 26d |  | Sixmanager |  |  | 100 | No se ha iniciado |  |  |

| ID | WBS | Task | Type | Duration | Start | Finish | Predecessors | Total slack | Constraint | Resources | Work | Text2 | Text5 |
| --- | --- | --- | --- | --- | --- | --- | --- | --- | --- | --- | --- | --- | --- |
| 225 | 2 | **Puesta en marcha Cluster ACM** |  | 14d | 2026-07-16 | 2026-08-04 | 224 | 0d | start no earlier than 2026-07-16 |  | 176h | No se ha iniciado | 101 |
| 226 | 2.1 | Despliegue Openshift Bare Metal |  | 3d | 2026-07-16 | 2026-07-20 |  | 11d |  | Sixmanager | 22h | No se ha iniciado | 155 |
| 227 | 2.2 | Configuraciones Post Instalación |  | 3d | 2026-07-16 | 2026-07-20 |  | 11d |  | Sixmanager | 22h | No se ha iniciado | 156 |
| 228 | 2.3 | Integración con redes de cliente |  | 3d | 2026-07-16 | 2026-07-20 |  | 11d |  | Sixmanager | 22h | No se ha iniciado | 157 |
| 229 | 2.4 | Pruebas Funcionales |  | 14d | 2026-07-16 | 2026-08-04 |  | 0d |  | Sixmanager | 110h | No se ha iniciado | 158 |
| 230 | 2.5 | Sesión de entrega | milestone | 0d | 2026-08-04 | 2026-08-04 | 229 | 0d |  | Sixmanager |  | No se ha iniciado | 159 |
