# Gantt BCI CALYPSO BANCO GLOBAL 2.0

Schedule from MS Project XML, 2026-01-06 to 2026-04-29, A marks actual dates.

## Calendars

- Standard: Mon-Fri 08:00-12:00, 13:00-17:00; Sat-Sun off.

## Schedule

| ID | WBS | Task | Type | Duration | Start | Finish | Predecessors | Complete | Remaining | Constraint | Text2 | Text3 | Text1 |
| --- | --- | --- | --- | --- | --- | --- | --- | --- | --- | --- | --- | --- | --- |
| 1 | 1 | **Hablitación Plataforma Calypso Banco BCI** |  | 81.5d | 2026-01-06 A | 2026-04-29 |  | 8% | 74.98d | start no earlier than 2026-01-06 | En progreso | Sixmanager |  |
| 2 | 1.1 | **Ambiente Pre Productivo** |  | 81.5d | 2026-01-06 A | 2026-04-29 |  | 8% | 74.98d |  |  | Sixmanager |  |
| 3 | 1.1.1 | **Kick off y requerimientos** |  | 1d | 2026-01-06 A | 2026-01-06 |  | 100% |  |  |  |  |  |
| 4 | 1.1.1.1 | Inicio formal del proyecto (Kick Off) |  | 1d | 2026-01-06 A | 2026-01-06 |  | 100% |  |  | Completo | Sixmanager - BCI |  |
| 5 | 1.1.1.2 | Kickoff realizado | milestone | 0d | 2026-01-06 A | 2026-01-06 |  | 100% |  |  | Completo | Sixmanager - BCI |  |
| 6 | 1.1.2 | **Habilitacion de infrastructura fisica (Pre requisitos)** |  | 34d | 2026-01-15 A | 2026-03-03 |  | 20% | 27.2d |  |  |  |  |
| 7 | 1.1.2.1 | Solicitudes y formularios |  | 8d | 2026-01-15 A | 2026-01-26 |  | 40% | 4.8d |  | En progreso | BCI, SixManager |  |
| 8 | 1.1.2.2 | Recepcion de servidores DELL |  | 1d | 2026-02-27 | 2026-02-27 |  |  |  |  | No se ha iniciado | BCI |  |
| 9 | 1.1.2.3 | Direccionamiento IP / VLAN / PORT |  | 1d | 2026-02-23 | 2026-02-23 |  |  |  |  | No se ha iniciado | BCI |  |
| 10 | 1.1.2.4 | Espacio en data center para nuevo HW (Ru's) |  | 1d | 2026-02-24 | 2026-02-24 |  |  |  |  | No se ha iniciado | BCI |  |
| 11 | 1.1.2.5 | Coordinacion de hardware a data center BCI |  | 1d | 2026-02-25 | 2026-02-25 |  |  |  |  | No se ha iniciado | Sixmanager, BCI |  |
| 12 | 1.1.2.6 | Gestión de accesos vpn a Servidores |  | 1d | 2026-02-26 | 2026-02-26 |  |  |  |  | No se ha iniciado | BCI |  |
| 13 | 1.1.2.7 | Disponibilidad de puertas para conectividad |  | 1d | 2026-02-23 | 2026-02-23 |  |  |  |  | No se ha iniciado | BCI |  |
| 14 | 1.1.2.8 | Rackeo y conecticvidad de equipos en Aconcagua (Encendido y sanity boot) |  | 1d | 2026-03-02 | 2026-03-02 | 8 |  |  |  | No se ha iniciado | Sixmanager, BCI |  |
| 15 | 1.1.2.9 | Rackeo y conecticvidad de equipos en Longovilo- 3er sitio (Encendido y sanity boot) |  | 1d | 2026-03-03 | 2026-03-03 | 14 |  |  |  | No se ha iniciado | Sixmanager, BCI |  |
| 16 | 1.1.2.10 | Infraestructura instalada | milestone | 0d | 2026-03-03 | 2026-03-03 | 15 |  |  |  | No se ha iniciado | Sixmanager |  |
| 17 | 1.1.3 | **Plan de implementacion** |  | 58.5d | 2026-01-26 A | 2026-04-16 |  | 2% | 57.33d |  |  |  |  |
| 18 | 1.1.3.1 | Revisión y levantamiento de infraestructura actual |  | 5d | 2026-01-26 | 2026-01-30 |  |  |  |  | No se ha iniciado | Sixmanager |  |
| 19 | 1.1.3.2 | Diseño detallado de arquitectura preproductiva |  | 5d | 2026-02-02 | 2026-02-06 |  |  |  |  | No se ha iniciado | Sixmanager | false |
| 20 | 1.1.3.3 | Aprobación de diseño por parte del cliente | milestone | 0d | 2026-02-06 | 2026-02-06 | 19 |  |  |  | No se ha iniciado | BCI | false |
| 21 | 1.1.3.4 | **Prerrequisitos** |  | 32d | 2026-02-02 A | 2026-03-17 |  | 4% | 30.72d |  |  |  | false |
| 22 | 1.1.3.4.1 | Entrega documento prerrequisitos |  | 1d | 2026-02-02 A | 2026-02-02 |  | 50% | 0.5d |  | No se ha iniciado | Sixmanager |  |
| 23 | 1.1.3.4.2 | Reglas de acceso (Permisos en firewall entre redes y hacia internet) |  | 3d | 2026-03-04 | 2026-03-06 | 16 |  |  |  | No se ha iniciado | BCI | false |
| 24 | 1.1.3.4.3 | Registros DNS requeridos (Subdominios, registros tipo A, Reversos) |  | 3d | 2026-03-09 | 2026-03-11 | 23 |  |  |  | No se ha iniciado | BCI | false |
| 25 | 1.1.3.4.4 | Accesos a servicios de red (Load Balancer / NTP) |  | 3d | 2026-03-12 | 2026-03-16 | 24 |  |  |  | No se ha iniciado | BCI | false |
| 26 | 1.1.3.4.5 | Validación de Prerrequisitos |  | 1d | 2026-03-17 | 2026-03-17 | 25 |  |  |  | No se ha iniciado | Sixmanager | false |
| 27 | 1.1.3.4.6 | Generación de certificados |  | 3d | 2026-03-11 | 2026-03-13 |  |  |  |  | No se ha iniciado | BCI | false |
| 28 | 1.1.3.4.7 | Prerrequisitos entregados | milestone | 0d | 2026-03-17 | 2026-03-17 | 26 |  |  |  | No se ha iniciado | Sixmanager |  |

| ID | WBS | Task | Type | Duration | Start | Finish | Predecessors | Text2 | Text3 | Text1 |
| --- | --- | --- | --- | --- | --- | --- | --- | --- | --- | --- |
| 29 | 1.1.3.5 | **Habilitación OLVM** |  | 7d | 2026-03-18 | 2026-03-26 |  |  |  |  |
| 30 | 1.1.3.5.1 | Instalación de Hypervisor |  | 2d | 2026-03-18 | 2026-03-19 | 28 | No se ha iniciado | Sixmanager |  |
| 31 | 1.1.3.5.2 | Configuración de Networking |  | 1d | 2026-03-20 | 2026-03-20 | 30 | No se ha iniciado | Sixmanager, BCI |  |
| 32 | 1.1.3.5.3 | Integración con redes SAN |  | 1d | 2026-03-23 | 2026-03-23 | 31 | No se ha iniciado | Sixmanager, BCI |  |
| 33 | 1.1.3.5.4 | Despliegue de HostedEngine |  | 1d | 2026-03-24 | 2026-03-24 | 32 | No se ha iniciado | Sixmanager |  |
| 34 | 1.1.3.5.5 | Integración con redes del cliente |  | 1d | 2026-03-25 | 2026-03-25 | 33 | No se ha iniciado | Sixmanager |  |
| 35 | 1.1.3.5.6 | Creación de VMS utility Openshift (Bastión, Bootstrap) |  | 1d | 2026-03-26 | 2026-03-26 | 34 | No se ha iniciado | Sixmanager |  |
| 36 | 1.1.3.5.7 | Habilitación OLVM Finalizada | milestone | 0d | 2026-03-26 | 2026-03-26 | 35 | No se ha iniciado | Sixmanager |  |
| 37 | 1.1.3.6 | **Habilitación Cluster Openshift Pre Productivo** |  | 11d | 2026-03-27 | 2026-04-10 |  |  |  | false |
| 38 | 1.1.3.6.1 | Creación de Bootstrap |  | 1d | 2026-03-27 | 2026-03-27 | 35 | No se ha iniciado | Sixmanager |  |
| 39 | 1.1.3.6.2 | Despliegue Openshift Bare Metal |  | 5d | 2026-03-30 | 2026-04-03 | 38 | No se ha iniciado | Sixmanager | false |
| 40 | 1.1.3.6.3 | Configuraciones Post Instalación |  | 2d | 2026-04-06 | 2026-04-07 | 39 | No se ha iniciado | Sixmanager | false |
| 41 | 1.1.3.6.4 | Integración con redes de cliente |  | 1d | 2026-04-08 | 2026-04-08 | 40 | No se ha iniciado | Sixmanager | false |
| 42 | 1.1.3.6.5 | Habilitación de operador CSI |  | 1d | 2026-04-09 | 2026-04-09 | 41 | No se ha iniciado | Sixmanager | false |
| 43 | 1.1.3.6.6 | Sesión de entrega |  | 1d | 2026-04-10 | 2026-04-10 | 42 | No se ha iniciado | Sixmanager, BCI | false |
| 44 | 1.1.3.6.7 | Cluster Preproductivo instalado | milestone | 0d | 2026-04-10 | 2026-04-10 | 43 | No se ha iniciado | Sixmanager |  |
| 45 | 1.1.3.7 | **Habilitación BBDD** |  | 5d | 2026-03-24 | 2026-03-30 |  |  |  |  |
| 46 | 1.1.3.7.1 | Creación de máquinas virtuales BBDD |  | 1d | 2026-03-27 | 2026-03-27 | 36 | No se ha iniciado | Sixmanager |  |
| 47 | 1.1.3.7.2 | Incorporación de LUNS para servidores BBDD |  | 1d | 2026-03-24 | 2026-03-24 | 32 | No se ha iniciado | Sixmanager |  |
| 48 | 1.1.3.7.3 | Instalación y configuración Base de datos Oracle |  | 3d | 2026-03-25 | 2026-03-27 | 47 | No se ha iniciado | Sixmanager |  |
| 49 | 1.1.3.7.4 | Sesión de entrega |  | 1d | 2026-03-30 | 2026-03-30 | 48 | No se ha iniciado | Sixmanager, BCI |  |
| 50 | 1.1.3.7.5 | Habilitación BD Finalizada | milestone | 0d | 2026-03-30 | 2026-03-30 | 49 | No se ha iniciado | Sixmanager |  |
| 51 | 1.1.3.8 | **Despliegue y migracion de aplicaciones en DEV/UAT/INT** |  | 3.5d | 2026-04-13 | 2026-04-16 |  |  |  |  |
| 52 | 1.1.3.8.1 | Reunion de migracion |  | 0.5d | 2026-04-13 | 2026-04-13 | 44 | No se ha iniciado | Sixmanager, BCI |  |
| 53 | 1.1.3.8.2 | Revisión de prerrequisitos |  | 0.5d | 2026-04-13 | 2026-04-13 | 52 | No se ha iniciado | Sixmanager, BCI |  |
| 54 | 1.1.3.8.3 | Descarga de imagenes base |  | 1d | 2026-04-15 | 2026-04-15 | 63 | No se ha iniciado | Sixmanager, BCI |  |
| 55 | 1.1.3.8.4 | Migracion de archivos YAML |  | 1d | 2026-04-13 | 2026-04-14 | 52 | No se ha iniciado | Sixmanager, BCI |  |
| 56 | 1.1.3.8.5 | Migracion de base de datos |  | 1d | 2026-04-14 | 2026-04-15 | 55 | No se ha iniciado | Sixmanager |  |
| 57 | 1.1.3.8.6 | Pruebas de aplicación |  | 1d | 2026-04-15 | 2026-04-16 | 56 | No se ha iniciado | BCI |  |
| 58 | 1.1.3.8.7 | Fin despliegue aplicación | milestone | 0d | 2026-04-16 | 2026-04-16 | 57 | No se ha iniciado | Sixmanager |  |

| ID | WBS | Task | Type | Duration | Start | Finish | Predecessors | Text2 | Text3 | Text1 |
| --- | --- | --- | --- | --- | --- | --- | --- | --- | --- | --- |
| 59 | 1.1.4 | **Integración de componentes** |  | 9.5d | 2026-04-13 | 2026-04-24 |  |  |  |  |
| 60 | 1.1.4.1 | Integración de OCP con Storage vía CSI |  | 1d | 2026-04-13 | 2026-04-13 | 44 | No se ha iniciado | Sixmanager, BCI |  |
| 61 | 1.1.4.2 | Integración con Observabilidad y monitoreo de cliente (Nagios - Dynatrace) |  | 5d | 2026-04-16 | 2026-04-23 | 58 | No se ha iniciado | Sixmanager, BCI |  |
| 62 | 1.1.4.3 | Integración Active Directory |  | 1d | 2026-04-23 | 2026-04-24 | 61 | No se ha iniciado | Sixmanager, BCI |  |
| 63 | 1.1.4.4 | Despliegue de aplicaciones en GIT |  | 1d | 2026-04-14 | 2026-04-14 | 53 | No se ha iniciado | Sixmanager, BCI |  |
| 64 | 1.1.4.5 | Integración con Respaldos de cliente |  | 5d | 2026-04-16 | 2026-04-23 | 58 | No se ha iniciado | Sixmanager, BCI |  |
| 65 | 1.1.4.6 | Fin Etapa integración | milestone | 0d | 2026-04-23 | 2026-04-23 | 64 | No se ha iniciado | Sixmanager |  |
| 66 | 1.1.5 | **Cierre formal de la Fase 1** |  | 9d | 2026-04-16 | 2026-04-29 |  |  |  |  |
| 67 | 1.1.5.1 | Documentación |  | 4d | 2026-04-16 | 2026-04-22 | 58 | No se ha iniciado | Sixmanager | false |
| 68 | 1.1.5.2 | Pruebas Funcionales |  | 3d | 2026-04-22 | 2026-04-27 | 67 | No se ha iniciado | Sixmanager, BCI | false |
| 69 | 1.1.5.3 | Reunión de entrega de documentación y presentación de la solución |  | 1d | 2026-04-27 | 2026-04-28 | 68 | No se ha iniciado | Sixmanager, BCI |  |
| 70 | 1.1.5.4 | Soporte post implementación (evolutivo) |  | 1d | 2026-04-28 | 2026-04-29 | 69 | No se ha iniciado | Sixmanager, BCI |  |
| 71 | 1.1.5.5 | Cierre Proyecto Etapa Preproducción | milestone | 0d | 2026-04-28 | 2026-04-28 | 69 | No se ha iniciado | Sixmanager, BCI |  |
| 72 | 1.2 | **Ambiente Productivo / DR** |  | 0d | 2026-01-06 | 2026-01-06 |  | No se ha iniciado |  |  |
| 73 | 1.2.1 | **Habilitacion de infrastructura fisica (Pre requisitos)** |  | 0d | 2026-01-06 | 2026-01-06 |  |  |  |  |
| 74 | 1.2.1.1 | **Datacenter Aconcagua** |  | 0d | 2026-01-06 | 2026-01-06 |  | En progreso |  |  |
| 75 | 1.2.1.1.1 | Direccionamiento IP / VLAN / PORT | manual | 0d | 2026-01-06 | 2026-01-06 |  | No se ha iniciado | BCI |  |
| 76 | 1.2.1.1.2 | Gestión de accesos al datacenter (para conectividad de red de equipos) | manual | 0d | 2026-01-06 | 2026-01-06 |  | No se ha iniciado | BCI |  |
| 77 | 1.2.1.1.3 | Espacio en data center para nuevo HW (Ru's) | manual | 0d | 2026-01-06 | 2026-01-06 |  | No se ha iniciado | BCI |  |
| 78 | 1.2.1.1.4 | Arribo de servidores DELL Producción | manual | 0d | 2026-01-06 | 2026-01-06 |  | No se ha iniciado | Sixmanager |  |
| 79 | 1.2.1.1.5 | Ingreso hardware a data center BCI | manual | 0d | 2026-01-06 | 2026-01-06 |  | No se ha iniciado | Sixmanager |  |
| 80 | 1.2.1.1.6 | Disponibilidad de puertas para conectividad | manual | 0d | 2026-01-06 | 2026-01-06 |  | No se ha iniciado | BCI |  |
| 81 | 1.2.1.1.7 | Rackeo y conecticvidad de equipos en Aconcagua (Encendido y sanity boot) | manual | 0d | 2026-01-06 | 2026-01-06 |  | No se ha iniciado | Sixmanager |  |
| 82 | 1.2.1.2 | **Datacenter Longovilo** |  | 0d | 2026-01-06 | 2026-01-06 |  | No se ha iniciado |  |  |
| 83 | 1.2.1.2.1 | Direccionamiento IP / VLAN / PORT | manual | 0d | 2026-01-06 | 2026-01-06 |  | No se ha iniciado | BCI |  |
| 84 | 1.2.1.2.2 | Gestión de accesos al datacenter (para ingreso de equipos) | manual | 0d | 2026-01-06 | 2026-01-06 |  | No se ha iniciado | BCI |  |
| 85 | 1.2.1.2.3 | Espacio en data center para nuevo HW (Ru's) | manual | 0d | 2026-01-06 | 2026-01-06 |  | No se ha iniciado | BCI |  |
| 86 | 1.2.1.2.4 | Arribo de servidores DELL DR | manual | 0d | 2026-01-06 | 2026-01-06 |  | No se ha iniciado | BCI |  |
| 87 | 1.2.1.2.5 | Ingreso hardware a data center BCI | manual | 0d | 2026-01-06 | 2026-01-06 |  | No se ha iniciado | Sixmanager, BCI |  |
| 88 | 1.2.1.2.6 | Disponibilidad de puertas para conectividad | manual | 0d | 2026-01-06 | 2026-01-06 |  | No se ha iniciado | BCI |  |
| 89 | 1.2.1.2.7 | Rackeo y conecticvidad de equipos en Longovilo(Encendido y sanity boot) | manual | 0d | 2026-01-06 | 2026-01-06 |  | No se ha iniciado | Sixmanager, BCI |  |
| 90 | 1.2.1.3 | Infraestructura instalada | manual | 0d | 2026-01-06 | 2026-01-06 |  | No se ha iniciado | Sixmanager, BCI |  |

| ID | WBS | Task | Type | Duration | Start | Finish | Text2 | Text3 |
| --- | --- | --- | --- | --- | --- | --- | --- | --- |
| 91 | 1.2.2 | **Plan de implementacion** |  | 0d | 2026-01-06 | 2026-01-06 |  |  |
| 92 | 1.2.2.1 | Revisión y levantamiento de infraestructura actual | manual | 0d | 2026-01-06 | 2026-01-06 | No se ha iniciado | Sixmanager |
| 93 | 1.2.2.2 | Diseño detallado de arquitectura preproductiva | manual | 0d | 2026-01-06 | 2026-01-06 | No se ha iniciado | Sixmanager |
| 94 | 1.2.2.3 | Aprobación de diseño por parte del cliente | manual | 0d | 2026-01-06 | 2026-01-06 | No se ha iniciado | BCI |
| 95 | 1.2.2.4 | **Prerrequisitos** |  | 0d | 2026-01-06 | 2026-01-06 |  |  |
| 96 | 1.2.2.4.1 | **Prerrequisitos Producción** |  | 0d | 2026-01-06 | 2026-01-06 | No se ha iniciado |  |
| 97 | 1.2.2.4.1.1 | Entrega documento prerrequisitos Producción | manual | 0d | 2026-01-06 | 2026-01-06 | No se ha iniciado | Sixmanager |
| 98 | 1.2.2.4.1.2 | Reglas de acceso (Permisos en firewall entre redes y hacia internet) | manual | 0d | 2026-01-06 | 2026-01-06 | No se ha iniciado | Sixmanager, BCI |
| 99 | 1.2.2.4.1.3 | Registros DNS requeridos (Subdominios, registros tipo A, Reversos) | manual | 0d | 2026-01-06 | 2026-01-06 | No se ha iniciado | Sixmanager, BCI |
| 100 | 1.2.2.4.1.4 | Generación de certificados | manual | 0d | 2026-01-06 | 2026-01-06 | No se ha iniciado | Sixmanager, BCI |
| 101 | 1.2.2.4.1.5 | Accesos a servicios de red (Load Balancer / NTP) | manual | 0d | 2026-01-06 | 2026-01-06 | No se ha iniciado | Sixmanager, BCI |
| 102 | 1.2.2.4.1.6 | Validación de Prerrequisitos | manual | 0d | 2026-01-06 | 2026-01-06 | No se ha iniciado | Sixmanager, BCI |
| 103 | 1.2.2.4.2 | **Prerrequisitos DR** |  | 0d | 2026-01-06 | 2026-01-06 | No se ha iniciado |  |
| 104 | 1.2.2.4.2.1 | Entrega documento prerrequisitos | manual | 0d | 2026-01-06 | 2026-01-06 | No se ha iniciado | Sixmanager |
| 105 | 1.2.2.4.2.2 | Reglas de acceso (Permisos en firewall entre redes y hacia internet) | manual | 0d | 2026-01-06 | 2026-01-06 | No se ha iniciado | BCI |
| 106 | 1.2.2.4.2.3 | Registros DNS requeridos (Subdominios, registros tipo A, Reversos) | manual | 0d | 2026-01-06 | 2026-01-06 | No se ha iniciado | BCI |
| 107 | 1.2.2.4.2.4 | Generación de certificados | manual | 0d | 2026-01-06 | 2026-01-06 | No se ha iniciado | BCI |
| 108 | 1.2.2.4.2.5 | Accesos a servicios de red (Load Balancer / NTP) | manual | 0d | 2026-01-06 | 2026-01-06 | No se ha iniciado | BCI |
| 109 | 1.2.2.4.2.6 | Validación de Prerrequisitos | manual | 0d | 2026-01-06 | 2026-01-06 | No se ha iniciado | Sixmanager |
| 110 | 1.2.2.4.3 | Prerrequisitos entregados | manual | 0d | 2026-01-06 | 2026-01-06 | No se ha iniciado | BCI |
| 111 | 1.2.2.4.4 | **Integración Storage Datacenter Aconcagua** |  | 0d | 2026-01-06 | 2026-01-06 |  |  |
| 112 | 1.2.2.4.4.1 | Zonificación | manual | 0d | 2026-01-06 | 2026-01-06 | No se ha iniciado | BCI |
| 113 | 1.2.2.4.4.2 | Envío de prerrequisitos | manual | 0d | 2026-01-06 | 2026-01-06 | No se ha iniciado | Sixmanager |
| 114 | 1.2.2.4.4.3 | Publicación de LUN para OLVM | manual | 0d | 2026-01-06 | 2026-01-06 | No se ha iniciado | BCI |
| 115 | 1.2.2.4.4.4 | Publicación de LUNS para BBDD Productiva | manual | 0d | 2026-01-06 | 2026-01-06 | No se ha iniciado | BCI |
| 116 | 1.2.2.4.4.5 | Creación de accesos para driver CSI y publicación de volumen | manual | 0d | 2026-01-06 | 2026-01-06 | No se ha iniciado | BCI |
| 117 | 1.2.2.4.4.6 | Pruebas de conectividad hacia storage | manual | 0d | 2026-01-06 | 2026-01-06 | No se ha iniciado | Sixmanager, BCI |
| 118 | 1.2.2.4.4.7 | Integración Storage Aconcagua finalizada | manual | 0d | 2026-01-06 | 2026-01-06 | No se ha iniciado | Sixmanager, BCI |

| ID | WBS | Task | Type | Duration | Start | Finish | Text2 | Text3 |
| --- | --- | --- | --- | --- | --- | --- | --- | --- |
| 119 | 1.2.2.4.5 | **Integración Storage Datacenter Longovilo** |  | 0d | 2026-01-06 | 2026-01-06 |  |  |
| 120 | 1.2.2.4.5.1 | Zonificación | manual | 0d | 2026-01-06 | 2026-01-06 | No se ha iniciado | BCI |
| 121 | 1.2.2.4.5.2 | Envío de prerrequisitos | manual | 0d | 2026-01-06 | 2026-01-06 | No se ha iniciado | Sixmanager |
| 122 | 1.2.2.4.5.3 | Publicación de LUN para OLVM | manual | 0d | 2026-01-06 | 2026-01-06 | No se ha iniciado | BCI |
| 123 | 1.2.2.4.5.4 | Publicación de LUNS para BBDD Productiva | manual | 0d | 2026-01-06 | 2026-01-06 | No se ha iniciado | BCI |
| 124 | 1.2.2.4.5.5 | Creación de accesos para driver CSI y publicación de volumen | manual | 0d | 2026-01-06 | 2026-01-06 | No se ha iniciado | BCI |
| 125 | 1.2.2.4.5.6 | Pruebas de conectividad hacia storage | manual | 0d | 2026-01-06 | 2026-01-06 | No se ha iniciado | BCI |
| 126 | 1.2.2.4.5.7 | Integración Storage Longovilo finalizada | manual | 0d | 2026-01-06 | 2026-01-06 | No se ha iniciado | Sixmanager, BCI |
| 127 | 1.2.2.5 | **Habilitación Cluster Openshift Productivo** |  | 0d | 2026-01-06 | 2026-01-06 |  |  |
| 128 | 1.2.2.5.1 | Despliegue Openshift Bare Metal | manual | 0d | 2026-01-06 | 2026-01-06 | No se ha iniciado | Sixmanager |
| 129 | 1.2.2.5.2 | Configuraciones Post Instalación | manual | 0d | 2026-01-06 | 2026-01-06 | No se ha iniciado | Sixmanager |
| 130 | 1.2.2.5.3 | Integración con redes de cliente | manual | 0d | 2026-01-06 | 2026-01-06 | No se ha iniciado | Sixmanager |
| 131 | 1.2.2.5.4 | Habilitación de operador CSI | manual | 0d | 2026-01-06 | 2026-01-06 | No se ha iniciado | Sixmanager |
| 132 | 1.2.2.5.5 | Pruebas Funcionales | manual | 0d | 2026-01-06 | 2026-01-06 | No se ha iniciado | Sixmanager, BCI |
| 133 | 1.2.2.5.6 | Sesión de entrega | manual | 0d | 2026-01-06 | 2026-01-06 | No se ha iniciado | Sixmanager, BCI |
| 134 | 1.2.2.5.7 | Cluster Preproductivo instalado | manual | 0d | 2026-01-06 | 2026-01-06 | No se ha iniciado | Sixmanager |
| 135 | 1.2.2.6 | Habilitación OLVM y BD Producción | manual | 0d | 2026-01-06 | 2026-01-06 |  |  |
| 136 | 1.2.2.7 | **Instalación OLVM** |  | 0d | 2026-01-06 | 2026-01-06 | No se ha iniciado | Sixmanager |
| 137 | 1.2.2.7.1 | Habilitación Servidores B.D. | manual | 0d | 2026-01-06 | 2026-01-06 | No se ha iniciado | Sixmanager |
| 138 | 1.2.2.7.2 | Habilitación y configuración Base de datos Oracle Rac | manual | 0d | 2026-01-06 | 2026-01-06 | No se ha iniciado | Sixmanager |
| 139 | 1.2.2.7.3 | Configuración Dataguard | manual | 0d | 2026-01-06 | 2026-01-06 | No se ha iniciado | Sixmanager |
| 140 | 1.2.2.7.4 | Integración con redes del cliente | manual | 0d | 2026-01-06 | 2026-01-06 | No se ha iniciado | Sixmanager, BCI |
| 141 | 1.2.2.7.5 | Pruebas funcionales HA | manual | 0d | 2026-01-06 | 2026-01-06 | No se ha iniciado | Sixmanager, BCI |
| 142 | 1.2.2.7.6 | Creación de Esquemas de BD | manual | 0d | 2026-01-06 | 2026-01-06 | No se ha iniciado | Sixmanager, BCI |
| 143 | 1.2.2.7.7 | Sesión de entrega | manual | 0d | 2026-01-06 | 2026-01-06 | No se ha iniciado | Sixmanager, BCI |
| 144 | 1.2.2.7.8 | Habilitación OLVM y BD Finalizada | manual | 0d | 2026-01-06 | 2026-01-06 | No se ha iniciado | Sixmanager |

| ID | WBS | Task | Type | Duration | Start | Finish | Text2 | Text3 |
| --- | --- | --- | --- | --- | --- | --- | --- | --- |
| 145 | 1.2.2.8 | **Habilitación Cluster Openshift DR** |  | 0d | 2026-01-06 | 2026-01-06 |  |  |
| 146 | 1.2.2.8.1 | Despliegue Openshift Bare Metal | manual | 0d | 2026-01-06 | 2026-01-06 | No se ha iniciado | Sixmanager |
| 147 | 1.2.2.8.2 | Configuraciones Post Instalación | manual | 0d | 2026-01-06 | 2026-01-06 | No se ha iniciado | Sixmanager |
| 148 | 1.2.2.8.3 | Integración con redes de cliente | manual | 0d | 2026-01-06 | 2026-01-06 | No se ha iniciado | Sixmanager |
| 149 | 1.2.2.8.4 | Habilitación de operador CSI | manual | 0d | 2026-01-06 | 2026-01-06 | No se ha iniciado | Sixmanager |
| 150 | 1.2.2.8.5 | Pruebas Funcionales | manual | 0d | 2026-01-06 | 2026-01-06 | No se ha iniciado | Sixmanager, BCI |
| 151 | 1.2.2.8.6 | Sesión de entrega | manual | 0d | 2026-01-06 | 2026-01-06 | No se ha iniciado | Sixmanager, BCI |
| 152 | 1.2.2.8.7 | Cluster Preproductivo instalado | manual | 0d | 2026-01-06 | 2026-01-06 | No se ha iniciado | Sixmanager |
| 153 | 1.2.2.9 | **Habilitación OLVM y BD DR** |  | 0d | 2026-01-06 | 2026-01-06 |  |  |
| 154 | 1.2.2.9.1 | Instalación OLVM | manual | 0d | 2026-01-06 | 2026-01-06 | No se ha iniciado | Sixmanager |
| 155 | 1.2.2.9.2 | Habilitación Servidores B.D. | manual | 0d | 2026-01-06 | 2026-01-06 | No se ha iniciado | Sixmanager |
| 156 | 1.2.2.9.3 | Habilitación y configuración Base de datos Oracle Rac | manual | 0d | 2026-01-06 | 2026-01-06 | No se ha iniciado | Sixmanager |
| 157 | 1.2.2.9.4 | Configuración Dataguard | manual | 0d | 2026-01-06 | 2026-01-06 | No se ha iniciado | Sixmanager |
| 158 | 1.2.2.9.5 | Integración con redes del cliente | manual | 0d | 2026-01-06 | 2026-01-06 | No se ha iniciado | Sixmanager, BCI |
| 159 | 1.2.2.9.6 | Pruebas funcionales HA | manual | 0d | 2026-01-06 | 2026-01-06 | No se ha iniciado | Sixmanager, BCI |
| 160 | 1.2.2.9.7 | Creación de Esquemas de BD | manual | 0d | 2026-01-06 | 2026-01-06 | No se ha iniciado | Sixmanager, BCI |
| 161 | 1.2.2.9.8 | Sesión de entrega | manual | 0d | 2026-01-06 | 2026-01-06 | No se ha iniciado | Sixmanager, BCI |
| 162 | 1.2.2.9.9 | Habilitación OLVM y BD Finalizada | manual | 0d | 2026-01-06 | 2026-01-06 | No se ha iniciado | Sixmanager |
| 163 | 1.2.3 | **Plan de pruebas Replicación de LUNS** |  | 0d | 2026-01-06 | 2026-01-06 |  |  |
| 164 | 1.2.3.1 | Reunión de definiciones | manual | 0d | 2026-01-06 | 2026-01-06 | No se ha iniciado | Sixmanager |
| 165 | 1.2.3.2 | Pruebas de replica y restauración de LUNS | manual | 0d | 2026-01-06 | 2026-01-06 | No se ha iniciado | Sixmanager |
| 166 | 1.2.4 | **Integración de componentes** |  | 0d | 2026-01-06 | 2026-01-06 |  |  |
| 167 | 1.2.4.1 | Integración de OCP con B.D. | manual | 0d | 2026-01-06 | 2026-01-06 | No se ha iniciado | Sixmanager, BCI |
| 168 | 1.2.4.2 | Integración de OCP con Storage vía CSI | manual | 0d | 2026-01-06 | 2026-01-06 | No se ha iniciado | Sixmanager, BCI |
| 169 | 1.2.4.3 | Integración de OLVM con Storage | manual | 0d | 2026-01-06 | 2026-01-06 | No se ha iniciado | Sixmanager, BCI |
| 170 | 1.2.4.4 | Integración con Observabilidad y monitoreo de cliente (Nagios - Dynatrace) | manual | 0d | 2026-01-06 | 2026-01-06 | No se ha iniciado | Sixmanager, BCI |
| 171 | 1.2.4.5 | Integración Active Directory | manual | 0d | 2026-01-06 | 2026-01-06 | No se ha iniciado | Sixmanager, BCI |
| 172 | 1.2.4.6 | Integración con repositorio Git | manual | 0d | 2026-01-06 | 2026-01-06 | No se ha iniciado | Sixmanager, BCI |
| 173 | 1.2.4.7 | Integración con Respaldos de cliente | manual | 0d | 2026-01-06 | 2026-01-06 | No se ha iniciado | Sixmanager, BCI |
| 174 | 1.2.4.8 | Fin Etapa integración | manual | 0d | 2026-01-06 | 2026-01-06 | No se ha iniciado |  |

| ID | WBS | Task | Type | Duration | Start | Finish | Text2 | Text3 |
| --- | --- | --- | --- | --- | --- | --- | --- | --- |
| 175 | 1.2.4.9 | **Despliegue de aplicaciones Producción / DR** |  | 0d | 2026-01-06 | 2026-01-06 |  |  |
| 176 | 1.2.4.9.1 | Revisión de prerrequisitos | manual | 0d | 2026-01-06 | 2026-01-06 | No se ha iniciado | Sixmanager, BCI, Calypso |
| 177 | 1.2.4.9.2 | Definicion de rutas productivas (*) | manual | 0d | 2026-01-06 | 2026-01-06 | No se ha iniciado | Sixmanager, BCI, Calypso |
| 178 | 1.2.4.9.3 | Despliegue de aplicaciones en GIT | manual | 0d | 2026-01-06 | 2026-01-06 | No se ha iniciado | Sixmanager, BCI, Calypso |
| 179 | 1.2.4.9.4 | Construcción de imagen y compilación de aplicación | manual | 0d | 2026-01-06 | 2026-01-06 | No se ha iniciado | Sixmanager, BCI, Calypso |
| 180 | 1.2.4.9.5 | Carga de imagen a registry | manual | 0d | 2026-01-06 | 2026-01-06 | No se ha iniciado | Sixmanager, BCI, Calypso |
| 181 | 1.2.4.9.6 | Creación de archivos deployment | manual | 0d | 2026-01-06 | 2026-01-06 | No se ha iniciado | Sixmanager, BCI, Calypso |
| 182 | 1.2.4.9.7 | Creación de variables de ambientes por módulos | manual | 0d | 2026-01-06 | 2026-01-06 | No se ha iniciado | Sixmanager, BCI, Calypso |
| 183 | 1.2.4.9.8 | Crear PV para cada aplicación | manual | 0d | 2026-01-06 | 2026-01-06 | No se ha iniciado | Sixmanager, BCI, Calypso |
| 184 | 1.2.4.9.9 | Crear PVC para cada aplicación | manual | 0d | 2026-01-06 | 2026-01-06 | No se ha iniciado | Sixmanager, BCI, Calypso |
| 185 | 1.2.4.9.10 | Subida de aplicación y pruebas de conectividad | manual | 0d | 2026-01-06 | 2026-01-06 | No se ha iniciado | Sixmanager, BCI, Calypso |
| 186 | 1.2.4.9.11 | Creación de rutas de Servicios | manual | 0d | 2026-01-06 | 2026-01-06 | No se ha iniciado | Sixmanager, BCI, Calypso |
| 187 | 1.2.4.9.12 | Creación de rutas externas | manual | 0d | 2026-01-06 | 2026-01-06 | No se ha iniciado | Sixmanager, BCI, Calypso |
| 188 | 1.2.4.9.13 | Pruebas de aplicación | manual | 0d | 2026-01-06 | 2026-01-06 | No se ha iniciado | Sixmanager, BCI, Calypso |
| 189 | 1.2.4.9.14 | Fin despliegue aplicación | manual | 0d | 2026-01-06 | 2026-01-06 | No se ha iniciado | Sixmanager, BCI, Calypso |
| 190 | 1.3 | Cierre formal de la Fase Producción | manual | 0d | 2026-01-06 | 2026-01-06 |  |  |
| 191 | 1.4 | **Reunión de entrega de documentación y presentación de la solución** |  | 0d | 2026-01-06 | 2026-01-06 | No se ha iniciado | Sixmanager |
| 192 | 1.4.1 | **Paso a Producción** |  | 0d | 2026-01-06 | 2026-01-06 | No se ha iniciado |  |
| 193 | 1.4.1.1 | **Preparación de ambientes DEV para Operación** |  | 0d | 2026-01-06 | 2026-01-06 | No se ha iniciado |  |
| 194 | 1.4.1.1.1 | Integración con Observabilidad y monitoreo de cliente (Nagios - Dynatrace) | manual | 0d | 2026-01-06 | 2026-01-06 | No se ha iniciado | Sixmanager, BCI |
| 195 | 1.4.1.1.2 | Integración con repositorio Git | manual | 0d | 2026-01-06 | 2026-01-06 | No se ha iniciado | Sixmanager, BCI |
| 196 | 1.4.1.1.3 | Integración Active Directory | manual | 0d | 2026-01-06 | 2026-01-06 | No se ha iniciado | Sixmanager, BCI |
| 197 | 1.4.1.1.4 | Integración con Respaldos de cliente | manual | 0d | 2026-01-06 | 2026-01-06 | No se ha iniciado | Sixmanager, BCI |
| 198 | 1.4.1.1.5 | Generación de certificados (No mandatorio para la instalación) | manual | 0d | 2026-01-06 | 2026-01-06 | No se ha iniciado | BCI |
| 199 | 1.4.1.1.6 | Monitoreo del Cluster | manual | 0d | 2026-01-06 | 2026-01-06 | No se ha iniciado | Sixmanager |
| 200 | 1.4.1.1.7 | Cluster DEV listo para operación | manual | 0d | 2026-01-06 | 2026-01-06 | No se ha iniciado | Sixmanager, BCI |

| ID | WBS | Task | Type | Duration | Start | Finish | Text2 | Text3 |
| --- | --- | --- | --- | --- | --- | --- | --- | --- |
| 201 | 1.4.1.2 | **Preparación de ambientes PROD para Operación** |  | 0d | 2026-01-06 | 2026-01-06 |  |  |
| 202 | 1.4.1.2.1 | Integración con Observabilidad y monitoreo de cliente (Nagios - Dynatrace) | manual | 0d | 2026-01-06 | 2026-01-06 | No se ha iniciado | Sixmanager, BCI |
| 203 | 1.4.1.2.2 | Integración Active Directory | manual | 0d | 2026-01-06 | 2026-01-06 | No se ha iniciado | Sixmanager, BCI |
| 204 | 1.4.1.2.3 | Integración con Respaldos de cliente | manual | 0d | 2026-01-06 | 2026-01-06 | No se ha iniciado | Sixmanager, BCI |
| 205 | 1.4.1.2.4 | Generación de certificados (No mandatorio para la instalación) | manual | 0d | 2026-01-06 | 2026-01-06 | No se ha iniciado | BCI |
| 206 | 1.4.1.2.5 | Monitoreo del Cluster | manual | 0d | 2026-01-06 | 2026-01-06 | No se ha iniciado | Sixmanager |
| 207 | 1.4.1.2.6 | Cluster Producción listo para operación | manual | 0d | 2026-01-06 | 2026-01-06 | No se ha iniciado | Sixmanager, BCI |
| 208 | 1.4.1.2.7 | Incorporación a sistema de monitoreo Sixmanager | manual | 0d | 2026-01-06 | 2026-01-06 | No se ha iniciado | Sixmanager |
| 209 | 1.4.1.2.8 | Traspaso a área de Administración | manual | 0d | 2026-01-06 | 2026-01-06 | No se ha iniciado | Sixmanager |
| 210 | 1.4.1.2.9 | Plan de DR | manual | 0d | 2026-01-06 | 2026-01-06 | No se ha iniciado |  |
| 211 | 1.4.1.2.10 | Definición de SLA y condiciones | manual | 0d | 2026-01-06 | 2026-01-06 | No se ha iniciado | Sixmanager, BCI |
| 212 | 1.4.1.2.11 | Construcción de procedimientos | manual | 0d | 2026-01-06 | 2026-01-06 | No se ha iniciado |  |
| 213 | 1.4.1.2.12 | Openshift | manual | 0d | 2026-01-06 | 2026-01-06 | No se ha iniciado | Sixmanager |
| 214 | 1.4.1.2.13 | Bases de Datos | manual | 0d | 2026-01-06 | 2026-01-06 | No se ha iniciado | Sixmanager |
| 215 | 1.4.1.2.14 | Hypervisor | manual | 0d | 2026-01-06 | 2026-01-06 | No se ha iniciado | Sixmanager |
| 216 | 1.4.1.2.15 | Calypso | manual | 0d | 2026-01-06 | 2026-01-06 | No se ha iniciado | Sixmanager |
| 217 | 1.4.1.2.16 | Incorporación a sistema de tickets | manual | 0d | 2026-01-06 | 2026-01-06 | No se ha iniciado | Sixmanager |
| 218 | 1.4.1.2.17 | Puesta en marcha Cluster ACM | manual | 0d | 2026-01-06 | 2026-01-06 | No se ha iniciado |  |
| 219 | 1.4.1.2.18 | Despliegue Openshift Bare Metal | manual | 0d | 2026-01-06 | 2026-01-06 | No se ha iniciado | Sixmanager |
| 220 | 1.4.1.2.19 | Configuraciones Post Instalación | manual | 0d | 2026-01-06 | 2026-01-06 | No se ha iniciado | Sixmanager |
| 221 | 1.4.1.2.20 | Integración con redes de cliente | manual | 0d | 2026-01-06 | 2026-01-06 | No se ha iniciado | Sixmanager |
| 222 | 1.4.1.2.21 | Pruebas Funcionales | manual | 0d | 2026-01-06 | 2026-01-06 | No se ha iniciado | Sixmanager |
| 223 | 1.4.1.2.22 | Sesión de entrega | manual | 0d | 2026-01-06 | 2026-01-06 | No se ha iniciado | Sixmanager |
